# project.xml

Schedule from MS Project XML, 2026-10-14 to 2027-05-20.

## Calendars

- Padrão[Imported][Imported]: Mon-Fri 08:00-12:00, 13:00-17:00; Sat-Sun off. Exceptions (off unless hours are given): 2026-11-01, 2026-12-01, 2026-12-08, 2026-12-24 to 2026-12-25, 2026-12-28 to 2027-01-01, 2027-02-09, 2027-03-26, 2027-03-28, 2027-04-23 to 2027-04-25, 2027-04-29 to 2027-05-01.

## Resources

| Resource |
| --- |
| Unassigned |
| Estudante |
| Orientador |
| Adhara |
| Especialistas |

## Schedule

| ID | WBS | Task | Duration | Start | Finish | Predecessors | Constraint | Text1 | Text2 |
| --- | --- | --- | --- | --- | --- | --- | --- | --- | --- |
| 1 | 1 | **Projeto Dissertação (Adhara QBank)** | 143d | 2026-10-14 | 2027-05-20 |  |  |  |  |
| 2 | 1.1 | **Documento de PREPD** | 51d | 2026-10-14 | 2027-01-05 |  |  | PREPD |  |
| 3 | 1.1.1 | Problema, objetivos e questões de investigação | 5d | 2026-10-14 | 2026-10-20 |  |  | PREPD | Estudante |
| 4 | 1.1.2 | Proposta metodológica e de avaliação | 5d | 2026-10-21 | 2026-10-27 | 3 |  | PREPD | Estudante |
| 5 | 1.1.3 | Planeamento (EAP e cronograma) | 5d | 2026-11-11 | 2026-11-17 | 11 |  | PREPD | Estudante |
| 6 | 1.1.4 | Extended abstract | 5d | 2026-11-11 | 2026-11-17 | 4, 11 |  | PREPD | Estudante |
| 7 | 1.1.5 | Documento final | 21d | 2026-11-18 | 2026-12-18 | 5, 6, 14FF+5d |  | PREPD | Estudante; Orientador |
| 8 | 1.1.6 | Apresentação | 5d | 2026-12-21 | 2027-01-05 | 7 |  | PREPD | Estudante |
| 9 | 1.2 | **Revisão sistemática da literatura** | 32d | 2026-10-21 | 2026-12-04 |  |  | DIMEI |  |
| 10 | 1.2.1 | Protocolo da revisão | 10d | 2026-10-21 | 2026-11-03 |  | start no earlier than 2026-10-21 | DIMEI | Estudante |
| 11 | 1.2.2 | Pesquisa e seleção (PRISMA) | 5d | 2026-11-04 | 2026-11-10 | 10 |  | DIMEI | Estudante |
| 12 | 1.2.3 | Avaliação da qualidade | 3d | 2026-11-11 | 2026-11-13 | 11 |  | DIMEI | Estudante |
| 13 | 1.2.4 | Extração e síntese | 11d | 2026-11-16 | 2026-11-30 | 12 |  | DIMEI | Estudante |
| 14 | 1.2.5 | Lacuna de investigação | 3d | 2026-12-02 | 2026-12-04 | 13 |  | DIMEI | Estudante |
| 15 | 1.3 | **Requisitos** | 13d | 2027-01-11 | 2027-01-27 |  |  | DIMEI |  |
| 16 | 1.3.1 | Levantamento com a Adhara | 5d | 2027-01-11 | 2027-01-15 | 7, 14 | start no earlier than 2027-01-11 | DIMEI | Estudante; Adhara |
| 17 | 1.3.2 | Requisitos funcionais e não funcionais | 5d | 2027-01-18 | 2027-01-22 | 16 |  | DIMEI | Estudante |
| 18 | 1.3.3 | Critérios de aceitação e de sucesso | 3d | 2027-01-25 | 2027-01-27 | 17 |  | DIMEI | Estudante; Adhara; Orientador |
| 19 | 1.4 | **Análise experimental de LLM** | 24d | 2027-01-18 | 2027-02-19 |  |  | DIMEI |  |
| 20 | 1.4.1 | Modelos candidatos (API e locais) | 3d | 2027-01-25 | 2027-01-27 | 17 |  | DIMEI | Estudante |
| 21 | 1.4.2 | Conjunto de teste | 11d | 2027-01-18 | 2027-02-01 | 16 |  | DIMEI | Estudante |
| 22 | 1.4.3 | Prompt e campos do contexto | 5d | 2027-01-28 | 2027-02-03 | 20 |  | DIMEI | Estudante |
| 23 | 1.4.4 | Resultados comparativos | 9d | 2027-02-04 | 2027-02-17 | 21, 22 |  | DIMEI | Estudante |
| 24 | 1.4.5 | Escolha do modelo e da configuração | 2d | 2027-02-18 | 2027-02-19 | 23, 18 |  | DIMEI | Estudante; Orientador |

Notes:
- 3: Estimativa de três pontos (PERT): O = 4, M = 5, P = 6 dias úteis; E = (O + 4M + P) / 6 = 5,00, arredondada para 5 dias.
- 4: Estimativa de três pontos (PERT): O = 3, M = 5, P = 7 dias úteis; E = (O + 4M + P) / 6 = 5,00, arredondada para 5 dias.
- 5: Estimativa de três pontos (PERT): O = 3, M = 5, P = 7 dias úteis; E = (O + 4M + P) / 6 = 5,00, arredondada para 5 dias.
- 6: Estimativa de três pontos (PERT): O = 3, M = 5, P = 7 dias úteis; E = (O + 4M + P) / 6 = 5,00, arredondada para 5 dias.
- 7: Estimativa de três pontos (PERT): O = 15, M = 20, P = 30 dias úteis; E = (O + 4M + P) / 6 = 20,83, arredondada para 21 dias.
- 8: Estimativa de três pontos (PERT): O = 3, M = 5, P = 7 dias úteis; E = (O + 4M + P) / 6 = 5,00, arredondada para 5 dias.
- 10: Estimativa de três pontos (PERT): O = 7, M = 10, P = 13 dias úteis; E = (O + 4M + P) / 6 = 10,00, arredondada para 10 dias. Depende de 1.1.1; aqui é uma restrição "não começar antes de" em vez da ligação, porque o ProjectLibre não aceita ligações nos dois sentidos entre os mesmos resumos.
- 11: Estimativa de três pontos (PERT): O = 4, M = 5, P = 6 dias úteis; E = (O + 4M + P) / 6 = 5,00, arredondada para 5 dias.
- 12: Estimativa de três pontos (PERT): O = 2, M = 3, P = 4 dias úteis; E = (O + 4M + P) / 6 = 3,00, arredondada para 3 dias.
- 13: Estimativa de três pontos (PERT): O = 7, M = 10, P = 15 dias úteis; E = (O + 4M + P) / 6 = 10,33, arredondada para 11 dias.
- 14: Estimativa de três pontos (PERT): O = 2, M = 3, P = 4 dias úteis; E = (O + 4M + P) / 6 = 3,00, arredondada para 3 dias.
- 16: Estimativa de três pontos (PERT): O = 3, M = 5, P = 7 dias úteis; E = (O + 4M + P) / 6 = 5,00, arredondada para 5 dias. Restrição: não começar antes do início da DIMEI.
- 17: Estimativa de três pontos (PERT): O = 3, M = 5, P = 7 dias úteis; E = (O + 4M + P) / 6 = 5,00, arredondada para 5 dias.
- 18: Estimativa de três pontos (PERT): O = 2, M = 3, P = 4 dias úteis; E = (O + 4M + P) / 6 = 3,00, arredondada para 3 dias.
- 20: Estimativa de três pontos (PERT): O = 2, M = 3, P = 4 dias úteis; E = (O + 4M + P) / 6 = 3,00, arredondada para 3 dias.
- 21: Estimativa de três pontos (PERT): O = 7, M = 10, P = 16 dias úteis; E = (O + 4M + P) / 6 = 10,50, arredondada para 11 dias.
- 22: Estimativa de três pontos (PERT): O = 3, M = 5, P = 7 dias úteis; E = (O + 4M + P) / 6 = 5,00, arredondada para 5 dias.
- 23: Estimativa de três pontos (PERT): O = 6, M = 8, P = 13 dias úteis; E = (O + 4M + P) / 6 = 8,50, arredondada para 9 dias.
- 24: Estimativa de três pontos (PERT): O = 1, M = 2, P = 3 dias úteis; E = (O + 4M + P) / 6 = 2,00, arredondada para 2 dias.

| ID | WBS | Task | Type | Duration | Start | Finish | Predecessors | Text1 | Text2 |
| --- | --- | --- | --- | --- | --- | --- | --- | --- | --- |
| 25 | 1.5 | **Avaliação** |  | 45d | 2027-02-22 | 2027-04-27 |  | DIMEI |  |
| 26 | 1.5.1 | Avaliação por especialistas |  | 9d | 2027-02-22 | 2027-03-04 | 24 | DIMEI | Estudante; Especialistas |
| 27 | 1.5.2 | Questionário a utilizadores |  | 11d | 2027-04-02 | 2027-04-16 | 40 | DIMEI | Estudante |
| 28 | 1.5.3 | Latência e custo em uso |  | 11d | 2027-04-02 | 2027-04-16 | 27SS | DIMEI | Estudante |
| 29 | 1.5.4 | Análise de resultados |  | 6d | 2027-04-19 | 2027-04-27 | 26, 27, 28 | DIMEI | Estudante |
| 30 | 1.6 | **Assistente implementado** |  | 39d | 2027-01-25 | 2027-03-19 |  | DIMEI |  |
| 31 | 1.6.1 | Arquitetura e integração no QBank |  | 6d | 2027-01-25 | 2027-02-01 | 17 | DIMEI | Estudante |
| 32 | 1.6.2 | Interface de conversa |  | 8d | 2027-02-02 | 2027-02-12 | 31 | DIMEI | Estudante |
| 33 | 1.6.3 | Serviço de conversa e ligação ao LLM |  | 11d | 2027-02-22 | 2027-03-08 | 31, 24 | DIMEI | Estudante |
| 34 | 1.6.4 | Segurança e privacidade |  | 5d | 2027-03-09 | 2027-03-15 | 33 | DIMEI | Estudante |
| 35 | 1.6.5 | Funcionalidades extra pedidas pela Adhara |  | 9d | 2027-03-09 | 2027-03-19 | 32, 33 | DIMEI | Estudante |
| 36 | 1.7 | **Verificação e testes** |  | 27d | 2027-02-23 | 2027-04-01 |  | DIMEI |  |
| 37 | 1.7.1 | Testes unitários e de componentes |  | 21d | 2027-02-23 | 2027-03-23 | 32SS+3d, 35FF+2d | DIMEI | Estudante |
| 38 | 1.7.2 | Testes de integração e de sistema |  | 5d | 2027-03-22 | 2027-03-29 | 34, 35 | DIMEI | Estudante |
| 39 | 1.7.3 | Testes de âmbito e de segurança |  | 4d | 2027-03-16 | 2027-03-19 | 34 | DIMEI | Estudante |
| 40 | 1.7.4 | Testes de aceitação |  | 3d | 2027-03-30 | 2027-04-01 | 37, 38, 39 | DIMEI | Estudante; Adhara |
| 41 | 1.8 | **Dissertação** |  | 78d | 2027-01-26 | 2027-05-20 |  | DIMEI |  |
| 42 | 1.8.1 | Documento da dissertação |  | 66d | 2027-01-26 | 2027-04-30 | 20SS, 29FF+3d | DIMEI | Estudante; Orientador |
| 43 | 1.8.2 | Versão final submetida |  | 8d | 2027-05-03 | 2027-05-12 | 42 | DIMEI | Estudante; Orientador |
| 44 | 1.8.3 | Apresentação da defesa |  | 6d | 2027-05-13 | 2027-05-20 | 43 | DIMEI | Estudante |
| 45 | 2 | **Marcos** |  | 118d | 2026-11-17 | 2027-05-20 |  |  |  |
| 46 | 2.1 | M1 Extended abstract entregue | milestone | 0d | 2026-11-17 | 2026-11-17 | 6 | PREPD |  |
| 47 | 2.2 | M2 Documento final de PREPD entregue | milestone | 0d | 2026-12-18 | 2026-12-18 | 7 | PREPD |  |
| 48 | 2.3 | M3 Pronto para a avaliação de PREPD | milestone | 0d | 2027-01-05 | 2027-01-05 | 8 | PREPD |  |
| 49 | 2.4 | M4 Requisitos aprovados | milestone | 0d | 2027-01-27 | 2027-01-27 | 18 | DIMEI |  |
| 50 | 2.5 | M5 Modelo escolhido | milestone | 0d | 2027-02-19 | 2027-02-19 | 24 | DIMEI |  |
| 51 | 2.6 | M6 Assistente integrado e aceite | milestone | 0d | 2027-04-01 | 2027-04-01 | 40 | DIMEI |  |
| 52 | 2.7 | M7 Dissertação submetida | milestone | 0d | 2027-05-12 | 2027-05-12 | 43 | DIMEI |  |
| 53 | 2.8 | M8 Projeto concluído | milestone | 0d | 2027-05-20 | 2027-05-20 | 44 | DIMEI |  |

Notes:
- 26: Estimativa de três pontos (PERT): O = 5, M = 8, P = 14 dias úteis; E = (O + 4M + P) / 6 = 8,50, arredondada para 9 dias.
- 27: Estimativa de três pontos (PERT): O = 8, M = 10, P = 15 dias úteis; E = (O + 4M + P) / 6 = 10,50, arredondada para 11 dias.
- 28: Estimativa de três pontos (PERT): O = 8, M = 10, P = 15 dias úteis; E = (O + 4M + P) / 6 = 10,50, arredondada para 11 dias.
- 29: Estimativa de três pontos (PERT): O = 4, M = 6, P = 8 dias úteis; E = (O + 4M + P) / 6 = 6,00, arredondada para 6 dias.
- 31: Estimativa de três pontos (PERT): O = 4, M = 6, P = 8 dias úteis; E = (O + 4M + P) / 6 = 6,00, arredondada para 6 dias.
- 32: Estimativa de três pontos (PERT): O = 5, M = 8, P = 11 dias úteis; E = (O + 4M + P) / 6 = 8,00, arredondada para 8 dias.
- 33: Estimativa de três pontos (PERT): O = 7, M = 10, P = 16 dias úteis; E = (O + 4M + P) / 6 = 10,50, arredondada para 11 dias.
- 34: Estimativa de três pontos (PERT): O = 3, M = 5, P = 7 dias úteis; E = (O + 4M + P) / 6 = 5,00, arredondada para 5 dias.
- 35: Estimativa de três pontos (PERT): O = 5, M = 8, P = 14 dias úteis; E = (O + 4M + P) / 6 = 8,50, arredondada para 9 dias.
- 37: Estimativa de três pontos (PERT): O = 15, M = 20, P = 28 dias úteis; E = (O + 4M + P) / 6 = 20,50, arredondada para 21 dias.
- 38: Estimativa de três pontos (PERT): O = 3, M = 5, P = 7 dias úteis; E = (O + 4M + P) / 6 = 5,00, arredondada para 5 dias.
- 39: Estimativa de três pontos (PERT): O = 3, M = 4, P = 5 dias úteis; E = (O + 4M + P) / 6 = 4,00, arredondada para 4 dias.
- 40: Estimativa de três pontos (PERT): O = 2, M = 3, P = 4 dias úteis; E = (O + 4M + P) / 6 = 3,00, arredondada para 3 dias.
- 42: Estimativa de três pontos (PERT): O = 55, M = 65, P = 80 dias úteis; E = (O + 4M + P) / 6 = 65,83, arredondada para 66 dias.
- 43: Estimativa de três pontos (PERT): O = 5, M = 7, P = 10 dias úteis; E = (O + 4M + P) / 6 = 7,17, arredondada para 8 dias.
- 44: Estimativa de três pontos (PERT): O = 4, M = 5, P = 8 dias úteis; E = (O + 4M + P) / 6 = 5,33, arredondada para 6 dias.
- 46: Prazo (deadline) a confirmar no calendário da unidade curricular.
- 47: Prazo (deadline) a confirmar no calendário da unidade curricular.
- 48: Prazo (deadline) a confirmar no calendário da unidade curricular.
- 52: Prazo (deadline) a confirmar no calendário da unidade curricular.
